# Evaluate Strategic Merger or Acquisition (M&A)

Schedule from MS Project XML, 2024-09-26 to 2025-03-14.
This template addresses, from a Strategic Business Development perspective, the general activities that a company goes through to determine its business growth strategy. The roadmap includes understanding market position, evaluating trade-offs between mergers/acquisitions and internal development, evaluating M&A candidates, and placing valuation on target companies.

## Calendars

- Standard: Mon-Fri 08:00-12:00, 13:00-17:00; Sat-Sun off.

## Resources

| Resource | Notes |
| --- | --- |
| Key Executive Committee |  |
| Merger & Acquisition Team | The Merger and Acquisition Team will be include representation for / Legal, Financial, Human Impact, Marketing, Risk Management and Industry Specific Experts |
| Investment Banker |  |

## Schedule

| ID | WBS | Task | Type | Duration | Start | Finish | Predecessors | Total slack | Free slack | Resources | Work |
| --- | --- | --- | --- | --- | --- | --- | --- | --- | --- | --- | --- |
| 1 | 1 | **Develop Mergers & Acquisition Strategy** |  | 31d | 2024-09-26 | 2024-11-07 |  | 0d |  |  | 336h |
| 2 | 1.1 | **Identify Current Capabilities and Positioning** |  | 9d | 2024-09-26 | 2024-10-08 |  | 0d |  |  | 72h |
| 3 | 1.1.1 | Perform Competitive Analysis |  | 2d | 2024-09-26 | 2024-09-27 |  | 0d |  | Key Executive Committee | 16h |
| 4 | 1.1.2 | Perform Market Trend Analysis |  | 3d | 2024-09-30 | 2024-10-02 | 3 | 0d |  | Key Executive Committee | 24h |
| 5 | 1.1.3 | Define Current Positioning and Gaps |  | 4d | 2024-10-03 | 2024-10-08 | 4 | 0d |  | Key Executive Committee | 32h |
| 6 | 1.1.4 | Current Position Analysis Complete | milestone | 0d | 2024-10-08 | 2024-10-08 | 5 | 0d |  |  |  |
| 7 | 1.2 | **Define Merger/Acquisition Goals** |  | 13d | 2024-10-09 | 2024-10-25 |  | 0d |  |  | 104h |
| 8 | 1.2.1 | Define Strategic Objectives For M&A |  | 4d | 2024-10-09 | 2024-10-14 | 6 | 0d |  | Key Executive Committee | 32h |
| 9 | 1.2.2 | **Define Risk Tolerance for M&A** |  | 9d | 2024-10-15 | 2024-10-25 |  | 14d |  |  | 72h |
| 10 | 1.2.2.1 | Define Financial Risk Tolerance |  | 2d | 2024-10-15 | 2024-10-16 | 8 | 14d | 0d | Key Executive Committee | 16h |
| 11 | 1.2.2.2 | Define Market Position Risk Tolerance |  | 5d | 2024-10-17 | 2024-10-23 | 10 | 14d | 0d | Key Executive Committee | 40h |
| 12 | 1.2.2.3 | Define Capabilities Risk Tolerance |  | 2d | 2024-10-24 | 2024-10-25 | 11 | 14d | 0d | Key Executive Committee | 16h |
| 13 | 1.2.2.4 | Complete Risk Tolerance Assessment | milestone | 0d | 2024-10-25 | 2024-10-25 | 12 | 14d | 0d | Key Executive Committee |  |
| 14 | 1.3 | **Define Internal Versus M&A Evaluation Criteria** |  | 9d | 2024-10-28 | 2024-11-07 |  | 14d |  |  | 72h |
| 15 | 1.3.1 | Define Internal Development Capabilities Model |  | 1d | 2024-10-28 | 2024-10-28 | 13 | 14d | 0d | Key Executive Committee | 8h |
| 16 | 1.3.2 | Define Internal Versus M&A Comparison Model |  | 3d | 2024-10-29 | 2024-10-31 | 15 | 14d | 0d | Key Executive Committee | 24h |
| 17 | 1.3.3 | Define Selection Scenario and Target Performance Measures |  | 5d | 2024-11-01 | 2024-11-07 | 16 | 14d | 0d | Key Executive Committee | 40h |
| 18 | 1.3.4 | Internal Versus M&A Evaluation Criteria Complete | milestone | 0d | 2024-11-07 | 2024-11-07 | 17 | 14d | 0d | Key Executive Committee |  |
| 19 | 1.4 | **Form Merger & Acquisition Team** |  | 11d | 2024-10-15 | 2024-10-29 |  | 0d |  |  | 88h |
| 20 | 1.4.1 | Identify Merger & Acquisition Team Members |  | 2d | 2024-10-15 | 2024-10-16 | 8 | 0d |  | Key Executive Committee | 16h |
| 21 | 1.4.2 | Document Merger & Acquisition Team Charter |  | 1d | 2024-10-17 | 2024-10-17 | 20 | 0d |  | Key Executive Committee | 8h |
| 22 | 1.4.3 | Set Merger & Acquisition Team Major Milestones |  | 4d | 2024-10-18 | 2024-10-23 | 21 | 0d |  | Key Executive Committee | 32h |
| 23 | 1.4.4 | Set Merger & Acquisition Team Process |  | 2d | 2024-10-24 | 2024-10-25 | 22 | 0d |  | Key Executive Committee | 16h |
| 24 | 1.4.5 | Hold Merger & Acquisition Team Kickoff Meeting |  | 2d | 2024-10-28 | 2024-10-29 | 23 | 0d |  | Key Executive Committee | 16h |
| 25 | 1.4.6 | Formation of Merger & Acquisition Team Complete | milestone | 0d | 2024-10-29 | 2024-10-29 | 24 | 0d |  |  |  |

| ID | WBS | Task | Type | Duration | Start | Finish | Predecessors | Total slack | Resources | Work |
| --- | --- | --- | --- | --- | --- | --- | --- | --- | --- | --- |
| 26 | 2 | **Define M&A Target Identification and Screening Criteria** |  | 22d | 2024-10-30 | 2024-11-28 |  | 0d |  | 176h |
| 27 | 2.1 | **Define Target Identification Criteria** |  | 12d | 2024-10-30 | 2024-11-14 |  | 0d |  | 96h |
| 28 | 2.1.1 | Define Industry, Product, and Channel Criteria |  | 1d | 2024-10-30 | 2024-10-30 | 25 | 0d | Merger & Acquisition Team | 8h |
| 29 | 2.1.2 | Define Profitability, Capitalization, and Cash Flow Criteria |  | 4d | 2024-10-31 | 2024-11-05 | 28 | 0d | Merger & Acquisition Team | 32h |
| 30 | 2.1.3 | Define Intellectual Property and R&D Criteria |  | 1d | 2024-11-06 | 2024-11-06 | 29 | 0d | Merger & Acquisition Team | 8h |
| 31 | 2.1.4 | Define Management, Organization, and Governance Criteria |  | 3d | 2024-11-07 | 2024-11-11 | 30 | 0d | Merger & Acquisition Team | 24h |
| 32 | 2.1.5 | Define Risk, Legal, and Financial Exposure Criteria |  | 2d | 2024-11-12 | 2024-11-13 | 31 | 0d | Merger & Acquisition Team | 16h |
| 33 | 2.1.6 | Define and Summarize Synergy Criteria |  | 1d | 2024-11-14 | 2024-11-14 | 32 | 0d | Merger & Acquisition Team | 8h |
| 34 | 2.1.7 | Target Identification Criteria Complete | milestone | 0d | 2024-11-14 | 2024-11-14 | 33 | 0d |  |  |
| 35 | 2.2 | **Define Quantitative and Qualitative Screening Criteria** |  | 10d | 2024-11-15 | 2024-11-28 |  | 0d |  | 80h |
| 36 | 2.2.1 | Define Industry, Product, and Channel Screens |  | 1d | 2024-11-15 | 2024-11-15 | 34 | 0d | Merger & Acquisition Team | 8h |
| 37 | 2.2.2 | Define Profitability, Capitalization, and Cash Flow Screens |  | 2d | 2024-11-18 | 2024-11-19 | 36 | 0d | Merger & Acquisition Team | 16h |
| 38 | 2.2.3 | Define Intellectual Property and R&D Screens |  | 3d | 2024-11-20 | 2024-11-22 | 37 | 0d | Merger & Acquisition Team | 24h |
| 39 | 2.2.4 | Define Management, Organization, and Governance Screens |  | 2d | 2024-11-25 | 2024-11-26 | 38 | 0d | Merger & Acquisition Team | 16h |
| 40 | 2.2.5 | Define Risk, Legal, and Financial Exposure Tolerance Screens |  | 2d | 2024-11-27 | 2024-11-28 | 39 | 0d | Merger & Acquisition Team | 16h |
| 41 | 2.2.6 | Screening Criteria Complete | milestone | 0d | 2024-11-28 | 2024-11-28 | 40 | 0d |  |  |
| 42 | 3 | **Develop List of Potential Acquisitions** |  | 45d? | 2024-11-08 | 2025-01-09 |  | 0d |  | 248h |
| 43 | 3.1 | Select Investment Banker |  | 1d? | 2024-11-08 | 2024-11-08 | 18 | 14d | Merger & Acquisition Team | 8h |
| 44 | 3.2 | Develop List of Potential Acquisitions |  | 6w | 2024-11-29 | 2025-01-09 | 43, 41 | 0d | Investment Banker | 240h |
| 45 | 3.3 | List of Potential Acquisitions Complete | milestone | 0d | 2025-01-09 | 2025-01-09 | 44 | 0d |  |  |
| 46 | 4 | **Perform M&A Target Valuation Analysis and Due Diligence** |  | 27d? | 2025-01-10 | 2025-02-17 |  | 0d |  | 464h |
| 47 | 4.1 | **Perform Valuation Analysis** |  | 10d? | 2025-01-10 | 2025-01-23 |  | 0d |  | 328h |
| 48 | 4.1.1 | **Perform Financial Valuation Analysis** |  | 10d | 2025-01-10 | 2025-01-23 |  | 0d |  | 80h |
| 49 | 4.1.1.1 | Define Financial Scenarios |  | 2d | 2025-01-10 | 2025-01-13 | 45 | 0d | Merger & Acquisition Team | 16h |
| 50 | 4.1.1.2 | Develop Financial Synergy Analysis |  | 3d | 2025-01-14 | 2025-01-16 | 49 | 0d | Merger & Acquisition Team | 24h |
| 51 | 4.1.1.3 | Define Financial Risks and Opportunities |  | 5d | 2025-01-17 | 2025-01-23 | 50 | 0d | Merger & Acquisition Team | 40h |

Notes:
- 26: In this section, we develop the criteria to pass to a broker for building a list of company possibilities.
- 50: For example, does this merger/acquisition financially meet the previously defined strategies we are trying to support?

| ID | WBS | Task | Type | Duration | Start | Finish | Predecessors | Total slack | Free slack | Resources | Work |
| --- | --- | --- | --- | --- | --- | --- | --- | --- | --- | --- | --- |
| 52 | 4.1.2 | **Perform Market and Product Analysis** |  | 8d | 2025-01-10 | 2025-01-21 |  | 2d |  |  | 64h |
| 53 | 4.1.2.1 | Identify Market Synergies |  | 3d | 2025-01-10 | 2025-01-14 | 45 | 2d | 0d | Merger & Acquisition Team | 24h |
| 54 | 4.1.2.2 | Identify Product Synergies |  | 4d | 2025-01-15 | 2025-01-20 | 53 | 2d | 0d | Merger & Acquisition Team | 32h |
| 55 | 4.1.2.3 | Identify Combined Portfolio Strategies |  | 1d | 2025-01-21 | 2025-01-21 | 54 | 2d |  | Merger & Acquisition Team | 8h |
| 56 | 4.1.3 | Perform Industry Specific Analysis |  | 1d? | 2025-01-10 | 2025-01-10 | 45 | 9d |  | Merger & Acquisition Team | 8h |
| 57 | 4.1.4 | Perform Intellectual Property and R&D Analysis (if appropriate) |  | 3d | 2025-01-10 | 2025-01-14 | 45 | 7d |  | Merger & Acquisition Team | 24h |
| 58 | 4.1.5 | **Perform Legal and Gov't Compliance Analysis** |  | 8d? | 2025-01-10 | 2025-01-21 |  | 2d |  |  | 64h |
| 59 | 4.1.5.1 | Define Legal Risks, Issues, and Synergies |  | 3d | 2025-01-10 | 2025-01-14 | 45 | 2d | 0d | Merger & Acquisition Team | 24h |
| 60 | 4.1.5.2 | Define SEC Compliance Risks, Issues, and Scenarios |  | 4d | 2025-01-15 | 2025-01-20 | 59 | 2d | 0d | Merger & Acquisition Team | 32h |
| 61 | 4.1.5.3 | Define Other Gov't Regulatory Risks, Issues, and Synergies |  | 1d? | 2025-01-21 | 2025-01-21 | 60 | 2d |  | Merger & Acquisition Team | 8h |
| 62 | 4.1.6 | **Perform Management and Corporate Governance Analysis** |  | 6d? | 2025-01-10 | 2025-01-17 |  | 4d |  |  | 48h |
| 63 | 4.1.6.1 | Define Management Synergies and Scenarios |  | 1d? | 2025-01-10 | 2025-01-10 | 45 | 4d | 0d | Merger & Acquisition Team | 8h |
| 64 | 4.1.6.2 | Define Corporate Governance Synergies and Scenarios |  | 3d | 2025-01-13 | 2025-01-15 | 63 | 4d | 0d | Merger & Acquisition Team | 24h |
| 65 | 4.1.6.3 | Define Institutional Shareholder Synergies, Impacts, and Scenarios |  | 2d | 2025-01-16 | 2025-01-17 | 64 | 4d |  | Merger & Acquisition Team | 16h |
| 66 | 4.1.7 | **Finalize Due Diligence Checklists** |  | 5d? | 2025-01-10 | 2025-01-16 |  | 41d |  |  | 40h |
| 67 | 4.1.7.1 | Prioritize Due Diligence Activities |  | 1d | 2025-01-10 | 2025-01-10 | 45 | 41d | 0d | Merger & Acquisition Team | 8h |
| 68 | 4.1.7.2 | Assign Due Diligence Activities |  | 3d | 2025-01-13 | 2025-01-15 | 67 | 41d | 0d | Merger & Acquisition Team | 24h |
| 69 | 4.1.7.3 | Define Due Diligence Schedule |  | 1d? | 2025-01-16 | 2025-01-16 | 68 | 41d |  | Merger & Acquisition Team | 8h |
| 70 | 4.1.8 | Valuation Analysis Complete | milestone | 0d | 2025-01-23 | 2025-01-23 | 51, 55, 56, 57, 61, 65 | 0d |  |  |  |
| 71 | 4.2 | **Perform Due Diligence Activities** |  | 17d? | 2025-01-24 | 2025-02-17 |  | 0d |  |  | 136h |
| 72 | 4.2.1 | Perform Fiscal Cost/Benefit Due Diligence |  | 2d | 2025-01-24 | 2025-01-27 | 70 | 0d |  | Merger & Acquisition Team | 16h |
| 73 | 4.2.2 | Perform Financial Reporting Requirements Due Diligence |  | 1d | 2025-01-28 | 2025-01-28 | 72 | 0d |  | Merger & Acquisition Team | 8h |
| 74 | 4.2.3 | Perform Market and Product Due Diligence |  | 1d? | 2025-01-29 | 2025-01-29 | 73 | 0d |  | Merger & Acquisition Team | 8h |
| 75 | 4.2.4 | Perform Industry-Specific Due Diligence |  | 6d | 2025-01-30 | 2025-02-06 | 74 | 0d |  | Merger & Acquisition Team | 48h |
| 76 | 4.2.5 | Perform Intellectual Property and R&D Due Diligence |  | 1d | 2025-02-07 | 2025-02-07 | 75 | 0d |  | Merger & Acquisition Team | 8h |
| 77 | 4.2.6 | Perform Legal, Risk, and Government Compliance Due Diligence |  | 2d | 2025-02-10 | 2025-02-11 | 76 | 0d |  | Merger & Acquisition Team | 16h |
| 78 | 4.2.7 | Perform Management and Corporate Governance Due Diligence |  | 1d | 2025-02-12 | 2025-02-12 | 77 | 0d |  | Merger & Acquisition Team | 8h |
| 79 | 4.2.8 | Compile Results of Due Diligence Assessment |  | 3d | 2025-02-13 | 2025-02-17 | 78 | 0d |  | Merger & Acquisition Team | 24h |
| 80 | 4.2.9 | Due Diligence Assessment Complete | milestone | 0d | 2025-02-17 | 2025-02-17 | 79 | 0d |  |  |  |
| 81 | 4.3 | Valuation and Due Diligence Complete | milestone | 0d | 2025-02-17 | 2025-02-17 | 70, 80 | 0d |  |  |  |

Notes:
- 56: For example, for a Manufacturing company: / - Define Global/Local Distribution channel Analysis / - Define Supply Chain Synergies and Risks
- 75: An example of industry-specific due diligence is an analysis of manufacturing and distribution capabilities, or other industry-specific fulfillment related processes.

| ID | WBS | Task | Type | Duration | Start | Finish | Predecessors | Total slack | Resources | Work |
| --- | --- | --- | --- | --- | --- | --- | --- | --- | --- | --- |
| 82 | 5 | **Perform Selection** |  | 5d | 2025-02-18 | 2025-02-24 |  | 0d |  | 64h |
| 83 | 5.1 | Present Selection Results |  | 3d | 2025-02-18 | 2025-02-20 | 81 | 0d | Merger & Acquisition Team; Key Executive Committee | 48h |
| 84 | 5.2 | Confirm Initial Selection |  | 2d | 2025-02-21 | 2025-02-24 | 83 | 0d | Key Executive Committee | 16h |
| 85 | 5.3 | Initial Selection Complete | milestone | 0d | 2025-02-24 | 2025-02-24 | 84 | 0d |  |  |
| 86 | 6 | **Perform Investment Activities** |  | 14d | 2025-02-25 | 2025-03-14 |  | 0d |  | 112h |
| 87 | 6.1 | Develop Merger/Acquisition Financing Strategies |  | 4d | 2025-02-25 | 2025-02-28 | 85 | 0d | Merger & Acquisition Team | 32h |
| 88 | 6.2 | Develop SEC Documents |  | 2d | 2025-03-03 | 2025-03-04 | 87 | 0d | Merger & Acquisition Team | 16h |
| 89 | 6.3 | Secure Financing |  | 2d | 2025-03-05 | 2025-03-06 | 88 | 0d | Merger & Acquisition Team | 16h |
| 90 | 6.4 | Prepare and Hold Proxy Vote |  | 4d | 2025-03-07 | 2025-03-12 | 89 | 0d | Merger & Acquisition Team | 32h |
| 91 | 6.5 | Finalize Investment Activities |  | 2d | 2025-03-13 | 2025-03-14 | 90 | 0d | Merger & Acquisition Team | 16h |
| 92 | 6.6 | Complete Transaction | milestone | 0d | 2025-03-14 | 2025-03-14 | 91 | 0d | Key Executive Committee |  |
| 93 | 7 | Merger & Acquisition Transaction Complete | milestone | 0d | 2025-03-14 | 2025-03-14 | 92 | 0d |  |  |
