# InstallProjectServer2013

Schedule from MS Project XML, 2024-09-30 to 2025-01-28.

## Calendars

- Standard: Mon-Fri 08:00-12:00, 13:00-17:00; Sat-Sun off.

## Resources

| Resource |
| --- |
| James |
| George |
| Catherine |
| Penelope |
| Ruby |
| Henry |

## Schedule

| ID | WBS | Task | Type | Duration | Start | Finish | Predecessors | Total slack | Resources | Work |
| --- | --- | --- | --- | --- | --- | --- | --- | --- | --- | --- |
| 1 | 1 | **Plan for Project Server 2013 deployment** |  | 86d | 2024-09-30 | 2025-01-28 |  | 0d |  | 864h |
| 2 | 1.1 | **Prepare for deployment** |  | 3d | 2024-09-30 | 2024-10-02 |  | 0d |  | 24h |
| 3 | 1.1.1 | Create users and groups in the Active Directory service |  | 3d | 2024-09-30 | 2024-10-02 |  | 0d | Catherine | 24h |
| 4 | 1.1.2 | Prepare for development MILESTONE | milestone, manual | 0d | 2024-09-30 | 2024-09-30 |  |  |  |  |
| 5 | 1.2 | **Configure SQL Server and Analysis Services** |  | 9d | 2024-10-03 | 2024-10-16 |  | 0d |  | 72h |
| 6 | 1.2.1 | Configure SQL Server network settings |  | 2d | 2024-10-03 | 2024-10-04 | 3 | 0d | George | 16h |
| 7 | 1.2.2 | Configure Analysis Services for building Project Server OLAP cubes |  | 4d | 2024-10-07 | 2024-10-10 | 6 | 0d | Henry | 32h |
| 8 | 1.2.3 | Create additional TempDB files |  | 3d | 2024-10-11 | 2024-10-15 | 7 | 0d | James | 24h |
| 9 | 1.2.4 | Configure SQL Server and Analysis Services MILESTONE | milestone, manual | 0d | 2024-10-16 | 2024-10-16 | 8 |  |  |  |
| 10 | 1.3 | **Install SharePoint Server 2013** |  | 12d | 2024-10-16 | 2024-11-01 |  | 0d |  | 152h |
| 11 | 1.3.1 | Prepare the farm servers |  | 2d | 2024-10-16 | 2024-10-17 | 8 | 0d | Penelope; Ruby | 32h |
| 12 | 1.3.2 | Install SharePoint 2013 on the farm servers |  | 3d | 2024-10-18 | 2024-10-22 | 11 | 0d | Ruby | 24h |
| 13 | 1.3.3 | Create and configure the farm |  | 2d | 2024-10-23 | 2024-10-24 | 12 | 0d | George; James | 32h |
| 14 | 1.3.4 | Add web servers to the farm |  | 2d | 2024-10-25 | 2024-10-28 | 13 | 0d | Catherine | 16h |
| 15 | 1.3.5 | Perform administrative tasks |  | 3d | 2024-10-29 | 2024-10-31 | 14 | 0d | George; Henry | 48h |
| 16 | 1.3.6 | Install SharePoint Server 2013 MILESTONE | milestone, manual | 0d | 2024-11-01 | 2024-11-01 | 15 |  |  |  |
| 17 | 1.4 | **Install and configure Project Server 2013** |  | 13d | 2024-11-01 | 2024-11-19 |  | 0d |  | 120h |
| 18 | 1.4.1 | Install Project Server 2013 |  | 2d | 2024-11-01 | 2024-11-04 | 15 | 0d | Ruby | 16h |
| 19 | 1.4.2 | Run the SharePoint Products and Technologies Configuration Wizard |  | 4d | 2024-11-05 | 2024-11-08 | 18 | 0d | Penelope | 32h |
| 20 | 1.4.3 | Install and configure Project Server 2013 MILESTONE | milestone, manual | 0d | 2024-11-11 | 2024-11-11 | 19 |  |  |  |
| 21 | 1.4.4 | **Configure services** |  | 7d | 2024-11-11 | 2024-11-19 |  | 0d |  | 72h |
| 22 | 1.4.4.1 | Start the Project Server Application Service |  | 2d | 2024-11-11 | 2024-11-12 | 19 | 0d | Henry; Ruby | 32h |
| 23 | 1.4.4.2 | Register a managed account |  | 3d | 2024-11-13 | 2024-11-15 | 22 | 0d | Catherine | 24h |
| 24 | 1.4.4.3 | Create a Project Server service application |  | 2d | 2024-11-18 | 2024-11-19 | 23 | 0d | Penelope | 16h |
| 25 | 1.4.4.4 | Configure services MILESTONE | milestone, manual | 0d | 2024-11-11 | 2024-11-11 |  |  |  |  |

Notes:
- 1: http://go.microsoft.com/fwlink/p/?LinkID=257341
- 2: http://go.microsoft.com/fwlink/p/?LinkId=257342
- 5: http://go.microsoft.com/fwlink/p/?LinkId=257344
- 10: http://go.microsoft.com/fwlink/p/?LinkId=257345
- 15: Configure: / Usage and health data collection / Diagnostic logging / Incoming email / Outgoing email / Search settings
- 17: http://go.microsoft.com/fwlink/p/?LinkId=257346

| ID | WBS | Task | Type | Duration | Start | Finish | Predecessors | Total slack | Resources | Work |
| --- | --- | --- | --- | --- | --- | --- | --- | --- | --- | --- |
| 26 | 1.5 | **Create a Project Web App site** |  | 33d | 2024-11-20 | 2025-01-06 |  | 0d |  | 328h |
| 27 | 1.5.1 | **Deploy Project Web App with a new site collection** |  | 5d | 2024-11-20 | 2024-11-26 |  | 0d |  | 40h |
| 28 | 1.5.1.1 | Create a top-level Web site |  | 2d | 2024-11-20 | 2024-11-21 | 24 | 0d | James | 16h |
| 29 | 1.5.1.2 | Create a Project Web App site |  | 3d | 2024-11-22 | 2024-11-26 | 28 | 0d | Penelope | 24h |
| 30 | 1.5.2 | **Deploy Project Web App in an existing site collection** |  | 28d | 2024-11-27 | 2025-01-06 |  | 0d |  | 288h |
| 31 | 1.5.2.1 | **Enable the Project Web App site collection features** |  | 20d | 2024-11-27 | 2024-12-24 |  | 0d |  | 160h |
| 32 | 1.5.2.1.1 | Create a Project Web App database |  | 8d | 2024-11-27 | 2024-12-06 | 29 | 0d | Catherine | 64h |
| 33 | 1.5.2.1.2 | Enable the Project Web App site collection features |  | 12d | 2024-12-09 | 2024-12-24 | 32 | 0d | Henry | 96h |
| 34 | 1.5.2.2 | Create a Project Web App site in an existing site collection |  | 8d | 2024-12-25 | 2025-01-03 | 33 | 0d | Catherine; Ruby | 128h |
| 35 | 1.5.2.3 | Deploy Project Web App in an existing site collection MILESTONE | milestone, manual | 0d | 2025-01-06 | 2025-01-06 | 34 |  |  |  |
| 36 | 1.6 | **Configure reporting for Project Web App** |  | 16d | 2025-01-06 | 2025-01-28 |  | 0d |  | 168h |
| 37 | 1.6.1 | Configure prerequisites |  | 2d | 2025-01-06 | 2025-01-07 | 34 | 0d | George | 16h |
| 38 | 1.6.2 | Accounts and security groups |  | 2d | 2025-01-08 | 2025-01-09 | 37 | 0d | Henry | 16h |
| 39 | 1.6.3 | Add a login for the report authors group |  | 2d | 2025-01-10 | 2025-01-13 | 38 | 0d | James | 16h |
| 40 | 1.6.4 | Install SQL Server 2008 Analysis Management Objects |  | 3d | 2025-01-14 | 2025-01-16 | 39 | 0d | Penelope; Ruby | 48h |
| 41 | 1.6.5 | Configure Excel Services settings |  | 3d | 2025-01-17 | 2025-01-21 | 40 | 0d | George | 24h |
| 42 | 1.6.6 | Configure Secure Store Service settings |  | 2d | 2025-01-22 | 2025-01-23 | 41 | 0d | Catherine | 16h |
| 43 | 1.6.7 | Populate the Report Authors and Report Viewers Active Directory groups |  | 2d | 2025-01-24 | 2025-01-27 | 42 | 0d | James; Penelope | 32h |
| 44 | 1.6.8 | Configure reporting for Project Web App MILESTONE | milestone, manual | 0d | 2025-01-28 | 2025-01-28 | 43 |  |  |  |

Notes:
- 26: http://go.microsoft.com/fwlink/p/?LinkId=257349
- 27: http://go.microsoft.com/fwlink/p/?LinkId=257350
- 30: http://go.microsoft.com/fwlink/p/?LinkId=257352
- 31: http://go.microsoft.com/fwlink/p/?LinkId=257353
- 34: http://go.microsoft.com/fwlink/p/?LinkId=257354
- 36: http://go.microsoft.com/fwlink/p/?LinkId=257355
